# CE64-41

Schedule from MS Project, 2021-08-02 to 2022-02-18, A marks actual dates.

## Calendars

- Standard: Mon-Fri 08:00-12:00, 13:00-17:00; Sat-Sun off.

## Resources

| Resource |
| --- |
| Dev Team |
| Phongpak |
| Chatchai |
| Kritsana |
| Dev Team1 |

## Schedule

| ID | WBS | Task | Type | Duration | Start | Finish | Predecessors | Complete | Remaining | Baseline start | Baseline finish | Baseline duration | Total slack | Resources | Work | Actual work |
| --- | --- | --- | --- | --- | --- | --- | --- | --- | --- | --- | --- | --- | --- | --- | --- | --- |
| 1 | 1 | Baseline Work | milestone | 0d | 2021-09-24 | 2021-09-24 |  |  |  | 2021-08-02 | 2021-11-26 | 85d | 106d |  |  |  |
| 2 | 2 | **การวิเคราะห์ความต้องการ** |  | 19d | 2021-08-02 A | 2021-08-26 |  | 91% | 1.78d | 2021-08-02 | 2021-08-26 | 19d | 0d |  | 192h | 174h |
| 3 | 2.1 | **พัฒนาชื่อโครงการ** |  | 15d | 2021-08-02 A | 2021-08-20 A |  | 100% |  | 2021-08-02 | 2021-08-20 | 15d |  |  | 120h | 120h |
| 4 | 2.1.1 | ระบุเป้าหมายและวัตถุประสงค์ | manual | 5d | 2021-08-02 A | 2021-08-06 A |  | 100% |  | 2021-08-02 | 2021-08-06 | 5d |  | Dev Team | 40h | 40h |
| 5 | 2.1.2 | พัฒนา ทบทวน อนุมัติ - ชื่อโครงการ | manual | 10d | 2021-08-09 A | 2021-08-20 A |  | 100% |  | 2021-08-09 | 2021-08-20 | 10d |  | Dev Team1 | 80h | 80h |
| 6 | 2.2 | **ศึกษาข้อมูลและทฤษฎีที่เกี่ยวข้อง** |  | 10d | 2021-08-13 A | 2021-08-26 |  | 75% | 2.5d | 2021-08-13 | 2021-08-26 | 10d |  |  | 72h | 54h |
| 7 | 2.2.1 | Learn fundamentals of Dapp on Ethereum | manual | 1d | 2021-08-13 A | 2021-08-13 |  | 75% | 0.25d | 2021-08-13 | 2021-08-13 | 1d |  | Dev Team | 8h | 6h |
| 8 | 2.2.2 | Learn about SmartContract in Solidity | manual | 1d | 2021-08-16 A | 2021-08-16 | 7 | 75% | 0.25d | 2021-08-16 | 2021-08-16 | 1d |  | Dev Team | 8h | 6h |
| 9 | 2.2.3 | Learn about variable and expression in Solidity | manual | 1d | 2021-08-17 A | 2021-08-17 | 8 | 75% | 0.25d | 2021-08-17 | 2021-08-17 | 1d |  | Dev Team | 8h | 6h |
| 10 | 2.2.4 | Learn about struct and array in Solidity | manual | 1d | 2021-08-18 A | 2021-08-18 | 9 | 75% | 0.25d | 2021-08-18 | 2021-08-18 | 1d |  | Dev Team | 8h | 6h |
| 11 | 2.2.5 | Learn about functions in Solidity | manual | 1d | 2021-08-19 A | 2021-08-19 | 10 | 75% | 0.25d | 2021-08-19 | 2021-08-19 | 1d |  | Dev Team | 8h | 6h |
| 12 | 2.2.6 | Learn about events in Solidity | manual | 1d | 2021-08-20 A | 2021-08-20 | 11 | 75% | 0.25d | 2021-08-20 | 2021-08-20 | 1d |  | Dev Team | 8h | 6h |
| 13 | 2.2.7 | Learn about web3.js | manual | 2d | 2021-08-23 A | 2021-08-24 | 12 | 75% | 0.5d | 2021-08-23 | 2021-08-23 | 2d |  | Dev Team | 16h | 12h |
| 14 | 2.2.8 | Discuss System Architecture | manual | 1d | 2021-08-25 A | 2021-08-25 | 13 | 75% | 0.25d | 2021-08-25 | 2021-08-25 | 1d |  | Dev Team | 8h | 6h |
| 15 | 3 | **การออกแบบ** |  | 65d | 2021-11-12 A | 2022-02-10 |  | 50% | 32.5d | 2021-11-12 | 2021-11-25 | 10d | 0d |  | 152h | 76h |
| 16 | 3.1 | use case diagram ของ Web App | manual | 2d | 2021-11-15 A | 2021-11-16 | 62 | 50% | 1d | 2021-11-15 | 2021-11-16 | 2d |  | Phongpak | 16h | 8h |
| 17 | 3.2 | class diagram ของ Web App | manual | 2d | 2021-11-17 A | 2021-11-18 | 16 | 50% | 1d | 2021-11-17 | 2021-11-18 | 2d |  | Phongpak | 16h | 8h |
| 18 | 3.3 | diagram ของ OAuth Web Service | manual | 5d | 2021-11-12 A | 2021-11-18 | 63 | 50% | 2.5d | 2021-11-12 | 2021-11-18 | 5d |  | Chatchai | 40h | 20h |
| 19 | 3.4 | use case diagram ของ Ethereum SmartContract | manual | 5d | 2021-11-12 A | 2021-11-18 | 64 | 50% | 2.5d | 2021-11-12 | 2021-11-18 | 5d |  | Kritsana | 40h | 20h |
| 20 | 3.5 | class diagram ของ Ethereum SmartContract | manual | 5d | 2021-11-19 A | 2021-11-25 | 19 | 50% | 2.5d | 2021-11-19 | 2021-11-25 | 5d |  | Kritsana | 40h | 20h |
| 21 | 3.6 | user registration flow ของ OAuth Web Service | manual | 5d | 2022-01-21 A | 2022-01-27 |  | 50% | 2.5d |  |  |  |  |  |  |  |
| 22 | 3.7 | authorization flow ของ Oauth Web Service | manual | 5d | 2022-02-04 A | 2022-02-10 |  | 50% | 2.5d |  |  |  |  |  |  |  |
| 23 | 4 | **การดำเนินงาน** |  | 128d | 2021-08-26 A | 2022-02-18 |  | 62% | 48.65d | 2021-08-26 | 2021-10-21 | 41d |  |  | 824h | 560h |
| 24 | 4.1 | **Web App** |  | 126d | 2021-08-26 A | 2022-02-17 |  | 58% | 53.12d | 2021-08-26 | 2021-10-14 | 36d | 0d |  | 288h | 196h |
| 25 | 4.1.1 | Learn how to setup XAMPP | manual | 1d | 2021-08-26 A | 2021-08-26 A | 14 | 100% |  | 2021-08-26 | 2021-08-26 | 1d |  | Phongpak | 8h | 8h |
| 26 | 4.1.2 | Learn how to use MySQL | manual | 1d | 2021-08-27 A | 2021-08-27 A | 25 | 100% |  | 2021-08-27 | 2021-08-27 | 1d |  | Phongpak | 8h | 8h |
| 27 | 4.1.3 | Learn how to use phpMyAdmin | manual | 1d | 2021-08-30 A | 2021-08-30 A | 26 | 100% |  | 2021-08-30 | 2021-08-30 | 1d |  | Phongpak | 8h | 8h |
| 28 | 4.1.4 | Learn how to setup and use Django | manual | 2d | 2021-08-31 A | 2021-09-01 A | 27 | 100% |  | 2021-08-31 | 2021-09-01 | 2d |  | Phongpak | 16h | 16h |
| 29 | 4.1.5 | Create a template and model with Django | manual | 2d | 2021-09-02 A | 2021-09-03 A | 28 | 100% |  | 2021-09-02 | 2021-09-03 | 2d |  | Phongpak | 16h | 16h |
| 30 | 4.1.6 | Create the To-Do List | manual | 2d | 2021-09-06 A | 2021-09-07 A | 29 | 100% |  | 2021-09-06 | 2021-09-07 | 2d |  | Phongpak | 16h | 16h |
| 31 | 4.1.7 | Create admin page | manual | 2d | 2021-09-08 A | 2021-09-09 | 30 | 75% | 0.5d | 2021-09-08 | 2021-09-09 | 2d |  | Phongpak | 16h | 12h |
| 32 | 4.1.8 | Add user registration page on Web App | manual | 10d | 2021-09-10 A | 2021-09-23 | 31 | 75% | 2.5d | 2021-09-10 | 2021-09-23 | 10d |  | Phongpak | 80h | 60h |
| 33 | 4.1.9 | Custom Web App's UI | manual | 10d | 2021-09-24 A | 2021-10-07 | 32 | 50% | 5d | 2021-09-24 | 2021-10-07 | 10d |  | Phongpak | 80h | 40h |
| 34 | 4.1.10 | Add a feature to share and permission system for a To-Do task | manual | 5d | 2021-10-08 A | 2021-10-14 | 33 | 30% | 3.5d | 2021-10-08 | 2021-10-14 | 5d |  | Phongpak | 40h | 12h |
| 35 | 4.1.11 | เชื่อมต่อ Web App กับ Oauth Web Service | manual | 5d | 2022-01-21 A | 2022-01-27 |  | 25% | 3.75d |  |  |  |  |  |  |  |
| 36 | 4.1.12 | Oauth Web Service เพื่อ authentication | manual | 5d | 2022-01-28 A | 2022-02-03 |  | 50% | 2.5d |  |  |  |  |  |  |  |
| 37 | 4.1.13 | ปรับแต่ง UI หน้า Redirect ของ Web App | manual | 5d | 2022-02-11 A | 2022-02-17 |  | 25% | 3.75d |  |  |  |  |  |  |  |

| ID | WBS | Task | Type | Duration | Start | Finish | Predecessors | Complete | Remaining | Baseline start | Baseline finish | Baseline duration | Total slack | Resources | Work | Actual work |
| --- | --- | --- | --- | --- | --- | --- | --- | --- | --- | --- | --- | --- | --- | --- | --- | --- |
| 38 | 4.2 | **Web service** |  | 126d | 2021-08-26 A | 2022-02-17 |  | 63% | 46.04d | 2021-08-26 | 2021-09-22 | 20d | 0d |  | 168h | 122h |
| 39 | 4.2.1 | เรียนรู้เกียวกับ Rols ในมาตราฐาน Oauth | manual | 1d | 2021-08-26 A | 2021-08-26 A | 14 | 100% |  | 2021-08-26 | 2021-08-26 | 1d |  | Chatchai | 8h | 8h |
| 40 | 4.2.2 | เรียนรู้เกียวกับ Flows ในมาตราฐาน Oauth | manual | 4d | 2021-08-27 A | 2021-09-01 A | 39 | 100% |  | 2021-08-27 | 2021-08-31 | 4d |  | Chatchai | 32h | 32h |
| 41 | 4.2.3 | Crate example web app | manual | 3d | 2021-09-02 A | 2021-09-06 A | 40 | 100% |  | 2021-09-02 | 2021-09-03 | 3d |  | Chatchai | 24h | 24h |
| 42 | 4.2.4 | Follow the OAuth tutorial with Google | manual | 3d | 2021-09-07 A | 2021-09-09 | 41 | 75% | 0.75d | 2021-09-07 | 2021-09-08 | 3d |  | Chatchai | 24h | 18h |
| 43 | 4.2.5 | ทดลองเขียน REST Web Service ด้วย NodeJS | manual | 5d | 2021-09-10 A | 2021-09-16 | 42 | 50% | 2.5d | 2021-09-10 | 2021-09-15 | 5d |  | Chatchai | 40h | 20h |
| 44 | 4.2.6 | เรียนรู้แนวทางการใช้ Express.js ออกแบบ Web Service API | manual | 5d | 2021-09-17 A | 2021-09-23 | 43 | 50% | 2.5d | 2021-09-17 | 2021-09-22 | 5d |  | Chatchai | 40h | 20h |
| 45 | 4.2.7 | ปรับแต่ง UI หน้า Redirect ของ Oauth Web Service | manual | 5d | 2022-02-11 A | 2022-02-17 |  | 25% | 3.75d |  |  |  |  |  |  |  |
| 46 | 4.3 | **Credential Store** |  | 126d | 2021-08-26 A | 2022-02-17 |  | 66% | 43.14d | 2021-08-26 | 2021-10-21 | 40d | 0d |  | 368h | 242h |
| 47 | 4.3.1 | เรียนรู้วิธีใช้ Truffle | manual | 3d | 2021-08-26 A | 2021-08-30 A | 14 | 100% |  | 2021-08-26 | 2021-08-27 | 3d |  | Kritsana | 24h | 24h |
| 48 | 4.3.2 | เรียนรู้วิธีใช้ Ganache | manual | 2d | 2021-08-31 A | 2021-09-01 A | 47 | 100% |  | 2021-08-31 | 2021-08-31 | 2d |  | Kritsana | 16h | 16h |
| 49 | 4.3.3 | ทดลองสร้าง contract และ functions ใน Solidity | manual | 10d | 2021-09-02 A | 2021-09-15 A | 48 | 100% |  | 2021-09-02 | 2021-09-14 | 10d |  | Kritsana | 80h | 80h |
| 50 | 4.3.4 | เรียก SmartContract จาก web3.js | manual | 3d | 2021-09-16 A | 2021-09-20 A | 49 | 100% |  | 2021-09-16 | 2021-09-17 | 3d |  | Kritsana | 24h | 24h |
| 51 | 4.3.5 | เขียนอ่านข้อมูลจาก SmartContract | manual | 3d | 2021-09-21 A | 2021-09-23 | 50 | 75% | 0.75d | 2021-09-21 | 2021-09-22 | 3d |  | Kritsana | 24h | 18h |
| 52 | 4.3.6 | ติดตั้งและทดสอบ SmartContract บน Testnet | manual | 10d | 2021-09-24 A | 2021-10-07 | 51 | 50% | 5d | 2021-09-24 | 2021-10-06 | 10d |  | Kritsana | 80h | 40h |
| 53 | 4.3.7 | ออกแบบโครงสร้างข้อมูล Blockchain | manual | 5d | 2021-10-08 A | 2021-10-14 | 52 | 50% | 2.5d | 2021-10-08 | 2021-10-13 | 5d |  | Kritsana | 40h | 20h |
| 54 | 4.3.8 | Web Service & Blockchain Integration | manual | 5d | 2021-10-15 A | 2021-10-21 | 53 | 25% | 3.75d | 2021-10-15 | 2021-10-21 | 5d |  | Kritsana; Chatchai | 80h | 20h |
| 55 | 4.3.9 | refresh authorization token ของ Oauth Web Service | manual | 5d | 2022-02-11 A | 2022-02-17 |  | 25% | 3.75d |  |  |  |  |  |  |  |
| 56 | 5 | **รายงานและคู่มือ** |  | 70.12d | 2021-08-26 A | 2021-12-02 |  | 48% | 36.65d | 2021-08-26 | 2021-11-26 | 67d | 0d |  | 496h | 232h |
| 57 | 5.1 | **ร่างรายงาน** |  | 46d | 2021-09-24 A | 2021-11-26 |  | 47% | 24.48d | 2021-09-24 | 2021-11-26 | 46d | 0d |  | 496h | 232h |
| 58 | 5.1.1 | ร่างรายงานบทที่ 1 | manual | 10d | 2021-09-24 A | 2021-10-07 A | 44 | 100% |  | 2021-09-24 | 2021-10-07 | 10d |  | Chatchai | 80h | 80h |
| 59 | 5.1.2 | ร่างรายงานบทที่ 2 เรื่อง Web Service | manual | 10d | 2021-10-15 A | 2021-10-28 | 34 | 50% | 5d | 2021-10-15 | 2021-10-28 | 10d |  | Phongpak | 80h | 40h |
| 60 | 5.1.3 | ร่างรายงานบทที่ 2 เรื่อง Oauth 2.0 | manual | 10d | 2021-10-22 A | 2021-11-04 | 54 | 50% | 5d | 2021-10-22 | 2021-11-04 | 10d |  | Chatchai | 80h | 40h |
| 61 | 5.1.4 | ร่างรายงานบทที่ 2 เรื่อง Blockchain | manual | 10d | 2021-10-22 A | 2021-11-04 | 54 | 50% | 5d | 2021-10-22 | 2021-11-04 | 10d |  | Kritsana | 80h | 40h |
| 62 | 5.1.5 | ร่างรายงานบทที่ 3 เรื่อง Web App Design | manual | 6d | 2021-11-05 A | 2021-11-12 | 61 | 25% | 4.5d | 2021-11-05 | 2021-11-12 | 6d |  | Phongpak | 48h | 12h |
| 63 | 5.1.6 | ร่างรายงานบทที่ 3 เรื่อง Oauth Authorization Server Design | manual | 5d | 2021-11-05 A | 2021-11-11 | 61 | 25% | 3.75d | 2021-11-05 | 2021-11-11 | 5d |  | Chatchai | 40h | 10h |
| 64 | 5.1.7 | ร่างรายงานบทที่ 3 เรื่อง Ethereum SmartContract Design | manual | 5d | 2021-11-05 A | 2021-11-11 | 61 | 25% | 3.75d | 2021-11-05 | 2021-11-11 | 5d |  | Kritsana | 40h | 10h |
| 65 | 5.1.8 | ตรวจสอบและแก้ไข รายงานบทที่ 3 | manual | 6d | 2021-11-19 | 2021-11-26 | 19 |  |  | 2021-11-19 | 2021-11-26 | 6d |  | Dev Team | 48h |  |

| ID | WBS | Task | Type | Duration | Start | Finish | Complete | Remaining | Baseline start | Baseline finish | Baseline duration | Total slack | Constraint | Resources |
| --- | --- | --- | --- | --- | --- | --- | --- | --- | --- | --- | --- | --- | --- | --- |
| 66 | 5.2 | **รายงานความก้าวหน้า** |  | 70.12d | 2021-08-26 A | 2021-12-02 | 85% | 10.79d | 2021-08-27 | 2021-11-26 | 65d | 0d |  |  |
| 67 | 5.2.1 | รายงานความก้าวหน้าครั้งที่ 1 | milestone, manual | 0d | 2021-08-27 A | 2021-08-27 A | 100% |  | 2021-08-27 | 2021-08-27 | 0d |  |  | Dev Team |
| 68 | 5.2.2 | รายงานความก้าวหน้าครั้งที่ 2 | milestone, manual | 0d | 2021-09-10 A | 2021-09-10 A | 100% |  | 2021-09-10 | 2021-09-10 | 0d |  |  | Dev Team |
| 69 | 5.2.3 | รายงานความก้าวหน้าครั้งที่ 3 | milestone, manual | 0d | 2021-09-24 A | 2021-09-24 A | 100% |  | 2021-09-24 | 2021-09-24 | 0d |  |  | Dev Team |
| 70 | 5.2.4 | รายงานความก้าวหน้าครั้งที่ 4 | milestone, manual | 0d | 2021-10-15 A | 2021-10-15 A | 100% |  | 2021-10-15 | 2021-10-15 | 0d |  |  | Dev Team |
| 71 | 5.2.5 | รายงานความก้าวหน้าครั้งที่ 5 | milestone, manual | 0d | 2021-11-05 A | 2021-11-05 A | 100% |  | 2021-11-05 | 2021-11-05 | 0d |  |  | Dev Team |
| 72 | 5.2.6 | รายงานความก้าวหน้าครั้งที่ 6 | milestone, manual | 0d | 2021-11-26 | 2021-11-26 |  |  | 2021-11-26 | 2021-11-26 | 0d |  |  | Dev Team |
| 73 | 5.2.7 | **ประชุมอัพเดตความก้าวหน้า** |  | 70.12d | 2021-08-26 A | 2021-12-02 | 85% | 10.79d |  |  |  | 0d |  |  |
| 74 | 5.2.7.1 | ประชุมอัพเดตความก้าวหน้า 1 | manual | 1h | 2021-08-26 A | 2021-08-26 A | 100% |  |  |  |  |  | start no earlier than 2021-08-26 |  |
| 75 | 5.2.7.2 | ประชุมอัพเดตความก้าวหน้า 2 | manual | 1h | 2021-09-02 A | 2021-09-02 A | 100% |  |  |  |  |  | start no earlier than 2021-09-02 |  |
| 76 | 5.2.7.3 | ประชุมอัพเดตความก้าวหน้า 3 | manual | 1h | 2021-09-09 A | 2021-09-09 A | 100% |  |  |  |  |  | start no earlier than 2021-09-09 |  |
| 77 | 5.2.7.4 | ประชุมอัพเดตความก้าวหน้า 4 | manual | 1h | 2021-09-16 A | 2021-09-16 A | 100% |  |  |  |  |  | start no earlier than 2021-09-16 |  |
| 78 | 5.2.7.5 | ประชุมอัพเดตความก้าวหน้า 5 | manual | 1h | 2021-09-23 A | 2021-09-23 A | 100% |  |  |  |  |  | start no earlier than 2021-09-23 |  |
| 79 | 5.2.7.6 | ประชุมอัพเดตความก้าวหน้า 6 | manual | 1h | 2021-10-07 A | 2021-10-07 A | 100% |  |  |  |  |  | start no earlier than 2021-10-07 |  |
| 80 | 5.2.7.7 | ประชุมอัพเดตความก้าวหน้า 7 | manual | 1h | 2021-10-14 A | 2021-10-14 A | 100% |  |  |  |  |  | start no earlier than 2021-10-14 |  |
| 81 | 5.2.7.8 | ประชุมอัพเดตความก้าวหน้า 8 | manual | 1h | 2021-10-28 A | 2021-10-28 A | 100% |  |  |  |  |  | start no earlier than 2021-10-28 |  |
| 82 | 5.2.7.9 | ประชุมอัพเดตความก้าวหน้า 9 | manual | 1h | 2021-11-04 A | 2021-11-04 A | 100% |  |  |  |  |  | start no earlier than 2021-11-04 |  |
| 83 | 5.2.7.10 | ประชุมอัพเดตความก้าวหน้า 10 | manual | 1h | 2021-11-11 A | 2021-11-11 A | 100% |  |  |  |  |  | start no earlier than 2021-11-11 |  |
| 84 | 5.2.7.11 | ประชุมอัพเดตความก้าวหน้า 11 | manual | 1h | 2021-11-18 A | 2021-11-18 A | 100% |  |  |  |  |  | start no earlier than 2021-11-18 |  |
| 85 | 5.2.7.12 | ประชุมอัพเดตความก้าวหน้า 12 | manual | 1h | 2021-11-25 | 2021-11-25 |  |  |  |  |  |  | start no earlier than 2021-11-25 |  |
| 86 | 5.2.7.13 | ประชุมอัพเดตความก้าวหน้า 13 | manual | 1h | 2021-12-02 | 2021-12-02 |  |  |  |  |  |  | start no earlier than 2021-12-02 |  |
